# Cronograma Villadent - Sistema web de agendamiento y recordatorio de citas

Schedule from MS Project XML, 2026-09-03 to 2026-11-26.

## Calendars

- Estándar Colombia 2026: Mon-Fri 08:00-12:00, 13:00-17:00; Sat-Sun off. Exceptions (off unless hours are given): 2026-10-12, 2026-11-02, 2026-11-16.

## Resources

| Resource | Rate |
| --- | --- |
| No Asignado |  |
| Diego Andrés Becerra Bonilla (Project Manager / QA) | 20000 |
| Yenderson Josué Rangel Martínez (Backend / DevOps) | 20000 |
| Jesús David Leal Espinel (Frontend / UX) | 20000 |
| Auxiliar y odontóloga de Villadent (cliente) |  |

## Schedule

| ID | WBS | Task | Type | Duration | Start | Finish | Predecessors | Resources |
| --- | --- | --- | --- | --- | --- | --- | --- | --- |
| 1 | 1 | **Villadent** |  | 58d | 2026-09-03 | 2026-11-26 |  |  |
| 2 | 1.1 | **OE1. Identificar los requerimientos funcionales y no funcionales (fase RAD 1: planificación de requisitos)** |  | 13d | 2026-09-03 | 2026-09-21 |  |  |
| 3 | 1.1.1 | Entrevistas estructuradas con la auxiliar y la odontóloga de Villadent |  | 3d | 2026-09-03 | 2026-09-07 |  | Diego Andrés Becerra Bonilla (Project Manager / QA) [25%]; Yenderson Josué Rangel Martínez (Backend / DevOps) [25%]; Jesús David Leal Espinel (Frontend / UX) [25%]; Auxiliar y odontóloga de Villadent (cliente) [25%] |
| 4 | 1.1.2 | Especificación de requisitos RF01 a RF10 y RNF01 a RNF05 |  | 5d | 2026-09-08 | 2026-09-14 | 3 | Diego Andrés Becerra Bonilla (Project Manager / QA) [25%] |
| 5 | 1.1.3 | Casos de uso CU-01 a CU-10 y sus diagramas |  | 5d | 2026-09-08 | 2026-09-14 | 3 | Jesús David Leal Espinel (Frontend / UX) [25%] |
| 6 | 1.1.4 | Estimación por puntos de función y registro de riesgos R-01 a R-04 |  | 4d | 2026-09-08 | 2026-09-11 | 3 | Yenderson Josué Rangel Martínez (Backend / DevOps) [25%] |
| 7 | 1.1.5 | Criterios de aceptación (Dado que... cuando... entonces...) por requisito |  | 3d | 2026-09-15 | 2026-09-17 | 4 | Diego Andrés Becerra Bonilla (Project Manager / QA) [25%] |
| 8 | 1.1.6 | Validación de los requisitos con Villadent |  | 2d | 2026-09-18 | 2026-09-21 | 5, 6, 7 | Diego Andrés Becerra Bonilla (Project Manager / QA) [25%]; Auxiliar y odontóloga de Villadent (cliente) [25%] |
| 9 | 1.1.7 | Hito: requisitos aprobados por Villadent | milestone | 0d | 2026-09-21 | 2026-09-21 | 8 |  |
| 10 | 1.2 | **OE2. Diseñar la arquitectura y el modelo de datos (fase RAD 2: diseño con el usuario)** |  | 8d | 2026-09-22 | 2026-10-01 |  |  |
| 11 | 1.2.1 | Arquitectura: Angular, Spring Boot hexagonal y PostgreSQL; despliegue en Vercel, Render y Neon |  | 4d | 2026-09-22 | 2026-09-25 | 9 | Yenderson Josué Rangel Martínez (Backend / DevOps) [25%] |
| 12 | 1.2.2 | Modelo de datos: odontólogos, procedimientos, horarios, pacientes, citas y personal |  | 4d | 2026-09-28 | 2026-10-01 | 11 | Yenderson Josué Rangel Martínez (Backend / DevOps) [25%] |
| 13 | 1.2.3 | Diseños de interfaz en Figma: flujo público de agendamiento y area del personal |  | 5d | 2026-09-22 | 2026-09-28 | 9 | Jesús David Leal Espinel (Frontend / UX) [25%] |
| 14 | 1.2.4 | Plan de pruebas (ISO/IEC/IEEE 29119-3) con casos por requisito |  | 5d | 2026-09-22 | 2026-09-28 | 9 | Diego Andrés Becerra Bonilla (Project Manager / QA) [25%] |
| 15 | 1.2.5 | Validación de los diseños con la auxiliar y la odontóloga |  | 2d | 2026-09-29 | 2026-09-30 | 13, 14 | Jesús David Leal Espinel (Frontend / UX) [25%]; Diego Andrés Becerra Bonilla (Project Manager / QA) [25%]; Auxiliar y odontóloga de Villadent (cliente) [25%] |
| 16 | 1.2.6 | Hito: arquitectura, datos y diseños aprobados | milestone | 0d | 2026-10-01 | 2026-10-01 | 12, 15 |  |
| 17 | 1.3 | **OE3. Implementar el agendamiento en línea y los recordatorios por WhatsApp (fase RAD 3: construcción por ciclos de timeboxing)** |  | 29d | 2026-10-02 | 2026-11-13 |  |  |
| 18 | 1.3.1 | Prototipo Angular con datos simulados: flujo público y agenda del personal |  | 6d | 2026-10-02 | 2026-10-09 | 16 | Jesús David Leal Espinel (Frontend / UX) [25%] |
| 19 | 1.3.2 | Entorno de desarrollo: Docker Compose, PostgreSQL y migraciones Flyway |  | 3d | 2026-10-02 | 2026-10-06 | 16 | Yenderson Josué Rangel Martínez (Backend / DevOps) [25%] |
| 20 | 1.3.3 | Ciclo 1: acceso por rol, datos del paciente, disponibilidad y agendas por odontólogo (RF09, RF02, RF01, RF03) con sus pruebas |  | 8d | 2026-10-07 | 2026-10-16 | 19 | Yenderson Josué Rangel Martínez (Backend / DevOps) [25%] |
| 21 | 1.3.4 | Validación del prototipo con Villadent y ajustes de accesibilidad |  | 2d | 2026-10-12 | 2026-10-13 | 18 | Jesús David Leal Espinel (Frontend / UX) [25%]; Auxiliar y odontóloga de Villadent (cliente) [25%] |
| 22 | 1.3.5 | Ciclo 2: duración por procedimiento, agendamiento del paciente y agenda centralizada (RF04, RF07, RF08) con sus pruebas |  | 6d | 2026-10-19 | 2026-10-26 | 20 | Yenderson Josué Rangel Martínez (Backend / DevOps) [25%] |
| 23 | 1.3.6 | Ciclo 3: recordatorios por WhatsApp con reintentos y enlace personal para confirmar, cancelar o reprogramar (RF05, RF06) con sus pruebas |  | 7d | 2026-10-27 | 2026-11-04 | 22 | Yenderson Josué Rangel Martínez (Backend / DevOps) [25%] |
| 24 | 1.3.7 | Ciclo 4: reportes administrativos con exportación CSV (RF10) con sus pruebas |  | 4d | 2026-11-05 | 2026-11-10 | 23 | Yenderson Josué Rangel Martínez (Backend / DevOps) [25%] |
| 25 | 1.3.8 | Integración del frontend con la API: catálogos, disponibilidad, agendamiento y agenda |  | 8d | 2026-10-27 | 2026-11-05 | 21, 22 | Jesús David Leal Espinel (Frontend / UX) [25%] |
| 26 | 1.3.9 | Pantallas de gestión de la cita por enlace personal y de reportes integradas con la API |  | 3d | 2026-11-11 | 2026-11-13 | 24, 25 | Jesús David Leal Espinel (Frontend / UX) [25%] |
| 27 | 1.3.10 | Seguimiento de calidad de cada ciclo: ejecución de los casos del plan y registro de defectos |  | 20d | 2026-10-14 | 2026-11-10 | 21 | Diego Andrés Becerra Bonilla (Project Manager / QA) [25%] |
| 28 | 1.3.11 | Hito: agendamiento y recordatorios implementados | milestone | 0d | 2026-11-13 | 2026-11-13 | 26, 27 |  |

| ID | WBS | Task | Type | Duration | Start | Finish | Predecessors | Resources |
| --- | --- | --- | --- | --- | --- | --- | --- | --- |
| 29 | 1.4 | **OE4. Desplegar el sistema en la nube con pruebas funcionales (fase RAD 4: transición)** |  | 8d | 2026-11-16 | 2026-11-26 |  |  |
| 30 | 1.4.1 | Pruebas de sistema y extremo a extremo con Playwright |  | 3d | 2026-11-16 | 2026-11-18 | 28 | Diego Andrés Becerra Bonilla (Project Manager / QA) [25%]; Jesús David Leal Espinel (Frontend / UX) [25%] |
| 31 | 1.4.2 | Pruebas no funcionales: rendimiento, seguridad OWASP y accesibilidad (RNF01 a RNF04) |  | 3d | 2026-11-16 | 2026-11-18 | 28 | Yenderson Josué Rangel Martínez (Backend / DevOps) [25%] |
| 32 | 1.4.3 | Despliegue en la nube: frontend en Vercel, API en Render y base de datos en Neon |  | 2d | 2026-11-19 | 2026-11-20 | 31 | Yenderson Josué Rangel Martínez (Backend / DevOps) [25%] |
| 33 | 1.4.4 | Pruebas de aceptación con la auxiliar y la odontóloga (UAT) y piloto con pacientes |  | 3d | 2026-11-23 | 2026-11-25 | 30, 32 | Diego Andrés Becerra Bonilla (Project Manager / QA) [25%]; Jesús David Leal Espinel (Frontend / UX) [25%]; Auxiliar y odontóloga de Villadent (cliente) [25%] |
| 34 | 1.4.5 | Corrección de defectos, regresión e informe de resultados |  | 1d | 2026-11-26 | 2026-11-26 | 33 | Yenderson Josué Rangel Martínez (Backend / DevOps) [25%]; Jesús David Leal Espinel (Frontend / UX) [25%]; Diego Andrés Becerra Bonilla (Project Manager / QA) [25%] |
| 35 | 1.4.6 | Hito: entrega final del proyecto | milestone | 0d | 2026-11-26 | 2026-11-26 | 34 |  |
